# D:\Developpements\DiamantExtreme\Document\Planification\Dx

Schedule from MS Project, 2003-05-12 to 2003-09-11, A marks actual dates.
Universite Sherbrooke

## Calendars

- Standard: Mon-Fri 08:00-12:00, 13:00-17:00; Sat-Sun off.

## Resources

| Resource |
| --- |
| Alex |
| Ruben |
| Yannick |

## Schedule

| ID | WBS | Task | Type | Duration | Start | Finish | Predecessors | Complete | Remaining | Baseline start | Baseline finish | Baseline duration | Total slack | Free slack | Constraint | Deadline | Resources | Work | Actual work |
| --- | --- | --- | --- | --- | --- | --- | --- | --- | --- | --- | --- | --- | --- | --- | --- | --- | --- | --- | --- |
| 1 | 1 | Début | milestone | 0d | 2003-05-12 | 2003-05-12 |  |  |  | 2003-05-12 | 2003-05-12 | 0d | 89d | 0d | start no earlier than 2003-05-12 |  |  |  |  |
| 2 | 2 | **Livrable 1 Vérification de données** |  | 9d | 2003-05-12 A | 2003-05-22 | 1 | 99% | 0d | 2003-05-12 | 2003-05-22 | 9d | 80d |  |  |  |  |  |  |
| 3 | 2.1 | Definir fichiers à importer |  | 2d | 2003-05-12 A | 2003-05-13 A |  | 100% |  | 2003-05-12 | 2003-05-13 | 2d |  |  |  | 2003-05-28 |  |  |  |
| 4 | 2.2 | Importer données |  | 2d | 2003-05-14 A | 2003-05-15 A | 3 | 100% |  | 2003-05-14 | 2003-05-15 | 2d |  |  |  |  |  |  |  |
| 5 | 2.3 | Vérification fichier |  | 5d | 2003-05-16 A | 2003-05-22 A | 4 | 100% |  | 2003-05-16 | 2003-05-22 | 5d |  |  | start no earlier than 2003-05-22 |  |  |  |  |
| 6 | 2.4 | Fin Livrable 1 | milestone | 0d | 2003-05-22 | 2003-05-22 | 5 |  |  | 2003-05-22 | 2003-05-22 | 0d | 80d |  | start no earlier than 2003-05-04 |  |  |  |  |
| 7 | 3 | **Librable 2 Menu Fichier** |  | 16d? | 2003-05-23 A | 2003-06-13 | 5 | 15% | 13.63d? | 2003-05-23 | 2003-06-17 | 17.5d? | 64d |  |  |  |  | 368h | 54.4h |
| 8 | 3.1 | Menu Nouveau Exam |  | 1d? | 2003-05-23 A | 2003-05-23 |  | 60% | 0.4d? | 2003-05-23 | 2003-05-26 | 2d? | 79d |  |  |  | Ruben | 8h | 4.8h |
| 9 | 3.2 | Menu Nouveau Cycle |  | 1d | 2003-05-26 | 2003-05-26 |  |  |  | 2003-05-27 | 2003-05-28 | 2d? | 78d |  |  |  | Ruben | 8h |  |
| 10 | 3.3 | Grille Horaire TTPanel |  | 2d? | 2003-05-29 A | 2003-05-30 |  | 60% | 0.8d? | 2003-05-29 | 2003-05-30 | 2d? | 74d |  |  |  | Ruben | 16h | 9.6h |
| 11 | 3.4 | Menu Open |  | 2d? | 2003-05-27 | 2003-05-28 |  |  |  | 2003-06-02 | 2003-06-03 | 2d? | 70d | 0d |  |  | Ruben | 16h |  |
| 12 | 3.5 | Actions Open |  | 2d? | 2003-06-02 | 2003-06-03 | 11 |  |  | 2003-06-04 | 2003-06-05 | 2d? | 70d | 0d |  |  | Ruben | 16h |  |
| 13 | 3.6 | Menu Fermer + Close Win |  | 2d? | 2003-06-04 | 2003-06-05 | 12 |  |  | 2003-06-06 | 2003-06-09 | 2d? | 70d |  |  |  | Ruben | 16h |  |
| 14 | 3.7 | Menu sauvegarde |  | 2d? | 2003-05-23 | 2003-05-26 |  |  |  | 2003-05-23 | 2003-05-26 | 2d? | 74d | 0d |  |  | Alex | 16h |  |
| 15 | 3.8 | Menu sauvegarde sous |  | 2d? | 2003-05-27 | 2003-05-28 | 14 |  |  | 2003-05-27 | 2003-05-28 | 2d? | 74d | 0d |  |  | Alex | 16h |  |
| 16 | 3.9 | Action sauvegarde |  | 2d? | 2003-05-29 | 2003-05-30 | 15 |  |  | 2003-05-29 | 2003-05-30 | 2d? | 74d |  |  |  | Alex | 16h |  |
| 17 | 3.10 | Lire/Écrire XML |  | 5d? | 2003-05-23 A | 2003-05-29 A |  | 100% |  | 2003-05-23 | 2003-05-29 | 5d? |  |  |  |  | Yannick | 40h | 40h |
| 18 | 3.11 | Lire/Écrire Grille horaire |  | 3d | 2003-05-30 | 2003-06-03 | 17 |  |  | 2003-05-30 | 2003-06-03 | 3d | 70d | 0d |  |  | Yannick | 24h |  |
| 19 | 3.12 | Construction TTStructure |  | 2d? | 2003-06-04 | 2003-06-05 | 18 |  |  | 2003-06-04 | 2003-06-05 | 2d? | 70d |  |  |  | Yannick | 16h |  |
| 20 | 3.13 | Menu Nouvelle grille horaire |  | 2d | 2003-06-06 | 2003-06-09 |  |  |  | 2003-06-10 | 2003-06-11 | 2d | 68d |  |  |  | Ruben | 16h |  |
| 21 | 3.14 | Actions Nouvelle grille |  | 4d | 2003-06-06 | 2003-06-11 |  |  |  | 2003-06-06 | 2003-06-11 | 4d | 44d | 2d |  |  | Yannick | 32h |  |
| 22 | 3.15 | Menu Modifier grille horaire |  | 2d | 2003-06-10 | 2003-06-11 |  |  |  | 2003-06-12 | 2003-06-13 | 2d | 42d | 0d |  |  | Ruben | 16h |  |
| 23 | 3.16 | Save grille horaire |  | 2d | 2003-06-12 | 2003-06-13 | 22 |  |  | 2003-06-16 | 2003-06-17 | 1.5d | 42d | 0d |  |  | Ruben | 16h |  |
| 24 | 3.17 | Tool bar modif grille |  | 5d? | 2003-06-02 | 2003-06-06 |  |  |  | 2003-06-02 | 2003-06-06 | 5d? | 64d | 0d |  |  | Alex | 40h |  |
| 25 | 3.18 | Actions Toolbar |  | 5d? | 2003-06-09 | 2003-06-13 | 24 |  |  | 2003-06-09 | 2003-06-13 | 5d? | 64d |  |  |  | Alex | 40h |  |
| 26 | 3.19 | Fin Livrable 2 | milestone | 0d | 2003-06-13 | 2003-06-13 | 23, 21 |  |  | 2003-06-17 | 2003-06-17 | 0d | 42d | 0d |  |  |  |  |  |

| ID | WBS | Task | Type | Duration | Start | Finish | Predecessors | Baseline start | Baseline finish | Baseline duration | Total slack | Free slack | Resources | Work |
| --- | --- | --- | --- | --- | --- | --- | --- | --- | --- | --- | --- | --- | --- | --- |
| 27 | 4 | **Livrable 3 Changements en mémoire** |  | 28d | 2003-06-16 | 2003-07-23 | 26 | 2003-06-17 | 2003-07-25 | 28d | 36d |  |  | 704h |
| 28 | 4.1 | **Affectation initiale 1** |  | 20d | 2003-06-16 | 2003-07-11 |  | 2003-06-17 | 2003-07-15 | 20d | 44d |  |  | 160h |
| 29 | 4.1.1 | Codage |  | 10d | 2003-06-16 | 2003-06-27 |  | 2003-06-17 | 2003-07-01 | 10d | 54d |  | Yannick | 80h |
| 30 | 4.1.2 | Test |  | 10d | 2003-06-30 | 2003-07-11 |  | 2003-07-01 | 2003-07-15 | 10d | 44d |  | Yannick | 80h |
| 31 | 4.2 | Menu activités |  | 2d | 2003-06-16 | 2003-06-17 |  | 2003-06-17 | 2003-06-19 | 2d | 60d | 0d | Alex | 16h |
| 32 | 4.3 | **Actions Activités** |  | 4d | 2003-06-18 | 2003-06-23 | 31 | 2003-06-19 | 2003-06-25 | 4d | 58d |  |  | 32h |
| 33 | 4.3.1 | Codage |  | 2d | 2003-06-18 | 2003-06-19 |  | 2003-06-19 | 2003-06-23 | 2d | 60d |  | Alex | 16h |
| 34 | 4.3.2 | Test |  | 2d | 2003-06-20 | 2003-06-23 |  | 2003-06-23 | 2003-06-25 | 2d | 58d |  | Alex | 16h |
| 35 | 4.4 | Menu blocs |  | 2d | 2003-06-24 | 2003-06-25 |  | 2003-06-25 | 2003-06-27 | 2d | 54d | 0d | Alex | 16h |
| 36 | 4.5 | **Actions blocs** |  | 4d | 2003-06-26 | 2003-07-01 | 35 | 2003-06-27 | 2003-07-03 | 4d | 52d |  |  | 32h |
| 37 | 4.5.1 | Codage |  | 2d | 2003-06-26 | 2003-06-27 |  | 2003-06-27 | 2003-07-01 | 2d | 54d |  | Alex | 16h |
| 38 | 4.5.2 | Test |  | 2d | 2003-06-30 | 2003-07-01 |  | 2003-07-01 | 2003-07-03 | 2d | 52d |  | Alex | 16h |
| 39 | 4.6 | Menu enseignants |  | 2d | 2003-07-02 | 2003-07-03 |  | 2003-07-03 | 2003-07-07 | 2d | 48d | 0d | Alex | 16h |
| 40 | 4.7 | **Actions enseignants** |  | 4d | 2003-07-04 | 2003-07-09 | 39 | 2003-07-07 | 2003-07-11 | 4d | 46d |  |  | 32h |
| 41 | 4.7.1 | Codage |  | 2d | 2003-07-04 | 2003-07-07 |  | 2003-07-07 | 2003-07-09 | 2d | 48d |  | Alex | 16h |
| 42 | 4.7.2 | Test |  | 2d | 2003-07-08 | 2003-07-09 |  | 2003-07-09 | 2003-07-11 | 2d | 46d |  | Alex | 16h |
| 43 | 4.8 | Menu groupe |  | 2d | 2003-07-10 | 2003-07-11 |  | 2003-07-11 | 2003-07-15 | 2d | 42d | 0d | Alex | 16h |
| 44 | 4.9 | **Actions groupes** |  | 4d | 2003-07-14 | 2003-07-17 | 43 | 2003-07-15 | 2003-07-21 | 4d | 40d |  |  | 32h |
| 45 | 4.9.1 | Codage |  | 2d | 2003-07-14 | 2003-07-15 |  | 2003-07-15 | 2003-07-17 | 2d | 42d |  | Alex | 16h |
| 46 | 4.9.2 | Test |  | 2d | 2003-07-16 | 2003-07-17 |  | 2003-07-17 | 2003-07-21 | 2d | 40d |  | Alex | 16h |
| 47 | 4.10 | **Grille horaire Adaptée** |  | 4d | 2003-07-18 | 2003-07-23 |  | 2003-07-21 | 2003-07-25 | 4d | 18d |  |  | 32h |
| 48 | 4.10.1 | Codage |  | 2d | 2003-07-18 | 2003-07-21 |  | 2003-07-21 | 2003-07-23 | 2d | 18d | 0d | Alex | 16h |
| 49 | 4.10.2 | Test |  | 2d | 2003-07-22 | 2003-07-23 | 48 | 2003-07-23 | 2003-07-25 | 2d | 18d | 0d | Alex | 16h |
| 50 | 4.11 | Fin Livrable 3 | milestone | 0d | 2003-07-23 | 2003-07-23 | 49 | 2003-07-25 | 2003-07-25 | 0d | 18d | 0d |  |  |

| ID | WBS | Task | Type | Duration | Start | Finish | Predecessors | Baseline start | Baseline finish | Baseline duration | Total slack | Free slack | Resources | Work |
| --- | --- | --- | --- | --- | --- | --- | --- | --- | --- | --- | --- | --- | --- | --- |
| 51 | 5 | **Livrable 4 Construction Horaire** |  | 18d? | 2003-07-24 | 2003-08-18 | 50 | 2003-07-25 | 2003-08-20 | 18d? | 18d |  |  | 480h |
| 52 | 5.1 | **Affectation initiale 2** |  | 6d? | 2003-07-24 | 2003-07-31 |  | 2003-07-25 | 2003-08-04 | 6d? | 28d |  |  | 48h |
| 53 | 5.1.1 | Codage actions Affectation |  | 2d? | 2003-07-24 | 2003-07-25 |  | 2003-07-25 | 2003-07-29 | 2d? | 34d |  | Yannick | 16h |
| 54 | 5.1.2 | Test |  | 2d? | 2003-07-28 | 2003-07-29 |  | 2003-07-29 | 2003-07-31 | 2d? | 32d |  | Yannick | 16h |
| 55 | 5.1.3 | Calcul de conflits |  | 2d? | 2003-07-30 | 2003-07-31 |  | 2003-07-31 | 2003-08-04 | 2d? | 24d | 0d | Yannick | 16h |
| 56 | 5.2 | **Conflits enseignants** |  | 4d? | 2003-08-01 | 2003-08-06 | 55 | 2003-08-04 | 2003-08-08 | 4d? | 24d |  |  | 32h |
| 57 | 5.2.1 | Actions associées conflits enseigents |  | 2d? | 2003-08-01 | 2003-08-04 |  | 2003-08-04 | 2003-08-06 | 2d? | 24d | 0d | Yannick | 16h |
| 58 | 5.2.2 | Test |  | 2d? | 2003-08-05 | 2003-08-06 | 57 | 2003-08-06 | 2003-08-08 | 2d? | 24d | 0d | Yannick | 16h |
| 59 | 5.3 | **Conflits étudiants** |  | 4d? | 2003-08-07 | 2003-08-12 |  | 2003-08-08 | 2003-08-14 | 4d? | 22d |  |  | 32h |
| 60 | 5.3.1 | Actions associées conflits étudiants |  | 2d? | 2003-08-07 | 2003-08-08 |  | 2003-08-08 | 2003-08-12 | 2d? | 24d |  | Yannick | 16h |
| 61 | 5.3.2 | Test |  | 2d? | 2003-08-11 | 2003-08-12 |  | 2003-08-12 | 2003-08-14 | 2d? | 22d |  | Yannick | 16h |
| 62 | 5.4 | **Conflits locaux** |  | 4d? | 2003-08-13 | 2003-08-18 |  | 2003-08-14 | 2003-08-20 | 4d? | 18d |  |  | 32h |
| 63 | 5.4.1 | Actions associées conflits locaux |  | 2d? | 2003-08-13 | 2003-08-14 |  | 2003-08-14 | 2003-08-18 | 2d? | 20d |  | Yannick | 16h |
| 64 | 5.4.2 | Test |  | 2d? | 2003-08-15 | 2003-08-18 |  | 2003-08-18 | 2003-08-20 | 2d? | 18d |  | Yannick | 16h |
| 65 | 5.5 | **Actions associées conflits et interface** |  | 4d? | 2003-08-07 | 2003-08-12 | 58 | 2003-08-08 | 2003-08-14 | 4d? | 22d |  |  | 32h |
| 66 | 5.5.1 | Codage |  | 2d? | 2003-08-07 | 2003-08-08 |  | 2003-08-08 | 2003-08-12 | 2d? | 24d |  | Alex | 16h |
| 67 | 5.5.2 | Test |  | 2d? | 2003-08-11 | 2003-08-12 |  | 2003-08-12 | 2003-08-14 | 2d? | 22d |  | Alex | 16h |
| 68 | 5.6 | Dialoges amélioration manuelle |  | 2d? | 2003-07-24 | 2003-07-25 |  | 2003-07-25 | 2003-07-29 | 2d? | 34d |  | Alex | 16h |
| 69 | 5.7 | **Actions amélioration manuelle** |  | 4d? | 2003-07-28 | 2003-07-31 |  | 2003-07-29 | 2003-08-04 | 4d? | 30d |  |  | 32h |
| 70 | 5.7.1 | Codage |  | 2d? | 2003-07-28 | 2003-07-29 |  | 2003-07-29 | 2003-07-31 | 2d? | 32d |  | Alex | 16h |
| 71 | 5.7.2 | Test |  | 2d? | 2003-07-30 | 2003-07-31 |  | 2003-07-31 | 2003-08-04 | 2d? | 30d |  | Alex | 16h |
| 72 | 5.8 | Exporter données |  | 2d? | 2003-08-01 | 2003-08-04 |  | 2003-08-04 | 2003-08-06 | 2d? | 28d |  | Alex | 16h |
| 73 | 5.9 | **Actions exporter données** |  | 8d? | 2003-08-05 | 2003-08-14 |  | 2003-08-06 | 2003-08-18 | 8d? | 10d |  |  | 32h |
| 74 | 5.9.1 | Codage |  | 2d? | 2003-08-05 | 2003-08-06 |  | 2003-08-06 | 2003-08-08 | 2d? | 26d |  | Alex | 16h |
| 75 | 5.9.2 | Test |  | 2d? | 2003-08-13 | 2003-08-14 |  | 2003-08-14 | 2003-08-18 | 2d? | 4d | 0d | Alex | 16h |
| 76 | 5.10 | Fin Livrable 4 | milestone | 0d | 2003-08-14 | 2003-08-14 | 75 | 2003-08-18 | 2003-08-18 | 0d | 4d | 0d |  |  |

| ID | WBS | Task | Type | Duration | Start | Finish | Predecessors | Baseline start | Baseline finish | Baseline duration | Total slack | Free slack | Resources | Work |
| --- | --- | --- | --- | --- | --- | --- | --- | --- | --- | --- | --- | --- | --- | --- |
| 77 | 6 | **Livrable 5 Optimisation + Rapports** |  | 14d? | 2003-08-15 | 2003-09-03 | 76 | 2003-08-18 | 2003-09-05 | 14d? | 4d |  |  | 160h |
| 78 | 6.1 | Optimisation |  | 2d? | 2003-08-19 | 2003-08-20 |  | 2003-08-20 | 2003-08-22 | 2d? | 12d | 0d | Yannick | 16h |
| 79 | 6.2 | Codage |  | 2d? | 2003-08-21 | 2003-08-22 | 78 | 2003-08-22 | 2003-08-26 | 2d? | 14d |  | Yannick | 16h |
| 80 | 6.3 | Test |  | 2d? | 2003-08-25 | 2003-08-26 | 78 | 2003-08-26 | 2003-08-28 | 2d? | 12d |  | Yannick | 16h |
| 81 | 6.4 | Dialog de rapports |  | 2d? | 2003-08-15 | 2003-08-18 |  | 2003-08-18 | 2003-08-20 | 2d? | 4d | 0d | Alex | 16h |
| 82 | 6.5 | Rapport complet |  | 2d? | 2003-08-19 | 2003-08-20 | 81 | 2003-08-20 | 2003-08-22 | 2d? | 4d | 0d | Alex | 16h |
| 83 | 6.6 | Rapport conflits |  | 2d? | 2003-08-21 | 2003-08-22 | 82 | 2003-08-22 | 2003-08-26 | 2d? | 4d | 0d | Alex | 16h |
| 84 | 6.7 | Rapport importation |  | 2d? | 2003-08-25 | 2003-08-26 | 83 | 2003-08-26 | 2003-08-28 | 2d? | 4d | 0d | Alex | 16h |
| 85 | 6.8 | Rapport liste d'activités |  | 2d? | 2003-08-27 | 2003-08-28 | 84 | 2003-08-28 | 2003-09-01 | 2d? | 4d | 0d | Alex | 16h |
| 86 | 6.9 | Rapport groupes |  | 2d? | 2003-08-29 | 2003-09-01 | 85 | 2003-09-01 | 2003-09-03 | 2d? | 4d | 0d | Alex | 16h |
| 87 | 6.10 | Rapport complet & ranger |  | 2d? | 2003-09-02 | 2003-09-03 | 86 | 2003-09-03 | 2003-09-05 | 2d? | 4d | 0d | Alex | 16h |
| 88 | 6.11 | Fin Livrable 5 | milestone | 0d | 2003-09-03 | 2003-09-03 | 87 | 2003-09-05 | 2003-09-05 | 0d | 4d | 0d | Alex |  |
| 89 | 7 | **Livrable 6 Maintenance** |  | 6d? | 2003-09-04 | 2003-09-11 | 88 | 2003-09-05 | 2003-09-15 | 6d? | 0d |  |  | 48h |
| 90 | 7.1 | Compéter les menus |  | 2d? | 2003-09-04 | 2003-09-05 |  | 2003-09-05 | 2003-09-09 | 2d? | 4d |  | Alex | 16h |
| 91 | 7.2 | Compléter lesrapports |  | 2d? | 2003-09-08 | 2003-09-09 |  | 2003-09-09 | 2003-09-11 | 2d? | 2d |  | Alex | 16h |
| 92 | 7.3 | Ajout des fonctionnalitées |  | 2d? | 2003-09-10 | 2003-09-11 |  | 2003-09-11 | 2003-09-15 | 2d? | 0d |  | Alex | 16h |
